# 集控III区高级应用

Schedule from a web Gantt chart, 2024-05-06 to 2025-06-30.
Saturdays and Sundays are off

## Schedule

| ID | WBS | Task | Duration | Start | Finish | Complete | inPeople | Status |
| --- | --- | --- | --- | --- | --- | --- | --- | --- |
| 2 | 1 | **一期** | 125d | 2024-05-06 | 2024-10-25 | 1% |  |  |
| 3 | 1.1 | **V0.1 架构搭建与需求梳理** | 5d | 2024-05-06 | 2024-05-10 | 2% |  |  |
| 4 | 1.1.1 | **架构搭建** | 5d | 2024-05-06 | 2024-05-10 | 50% | 王思威,刘祖勉 |  |
| 5 | 1.1.1.1 | 后端架构搭建 | 1d | 2024-05-06 | 2024-05-06 | 100% | 王思威 | done |
| 6 | 1.1.1.2 | 前端架构搭建 | 1d | 2024-05-10 | 2024-05-10 |  | 刘祖勉 |  |
| 7 | 1.1.2 | 需求梳理 | 2d | 2024-05-09 | 2024-05-10 |  | 黄炎峰 |  |
| 8 | 1.2 | **V1.1.0 实时监视模块(区域监视) 系统管理与组件迁移** | 10d | 2024-05-13 | 2024-05-24 |  |  | waiting |
| 9 | 1.2.1 | 需求评审 | 1d | 2024-05-13 | 2024-05-13 |  | 黄炎峰 | waiting |
| 10 | 1.2.2 | UI设计 | 8d | 2024-05-13 | 2024-05-22 |  | 黄书雅 | waiting |
| 11 | 1.2.3 | 前端开发 | 8d | 2024-05-13 | 2024-05-22 |  | 韦泉助, 刘祖勉, 刘美坤 | waiting |
| 12 | 1.2.4 | 后端开发 | 8d | 2024-05-13 | 2024-05-22 |  | 王思威, 齐心怡, 代德国, 刘家宏, 周靖 | waiting |
| 13 | 1.2.5 | 测试 | 2d | 2024-05-23 | 2024-05-24 |  | 张艳杰 | waiting |
| 14 | 1.2.6 | V1.1.1 需求设计 | 8d | 2024-05-13 | 2024-05-22 |  | 黄炎峰 | waiting |
| 15 | 1.2.7 | V1.1.1 需求评审 | 1d | 2024-05-23 | 2024-05-23 |  | 黄炎峰 | waiting |
| 16 | 1.2.8 | V1.1.1 UI设计 | 2d | 2024-05-23 | 2024-05-24 |  | 黄书雅 | waiting |
| 17 | 1.3 | **V1.1.1 实时监视(场站监视+设备监视)** | 10d | 2024-05-27 | 2024-06-07 |  |  | waiting |
| 18 | 1.3.1 | UI设计 | 5d | 2024-05-27 | 2024-05-31 |  | 黄书雅 | waiting |
| 19 | 1.3.2 | 前端开发 | 8d | 2024-05-27 | 2024-06-05 |  |  | waiting |
| 20 | 1.3.3 | 后端开发 | 8d | 2024-05-27 | 2024-06-05 |  |  | waiting |
| 21 | 1.3.4 | 测试 | 2d | 2024-06-06 | 2024-06-07 |  | 张艳杰 | waiting |
| 22 | 1.3.5 | V1.1.2 需求设计 | 8d | 2024-05-27 | 2024-06-05 |  | 黄炎峰 | waiting |
| 23 | 1.3.6 | V1.1.2 需求评审 | 1d | 2024-06-06 | 2024-06-06 |  | 黄炎峰 | waiting |
| 24 | 1.3.7 | V1.1.2 UI设计 | 2d | 2024-06-06 | 2024-06-07 |  | 黄书雅 | waiting |
| 25 | 1.4 | V1.1.2 XXXX | 10d | 2024-06-10 | 2024-06-21 |  |  | waiting |
| 26 | 1.5 | V1.1.3 XXXX | 10d | 2024-06-24 | 2024-07-05 |  |  | waiting |
| 27 | 1.6 | V1.1.4 XXXX | 10d | 2024-07-08 | 2024-07-19 |  |  | waiting |
| 28 | 1.7 | V1.1.5 XXXX | 10d | 2024-07-22 | 2024-08-02 |  |  | waiting |
| 29 | 1.8 | V1.1.6 XXXX | 10d | 2024-08-05 | 2024-08-16 |  |  | waiting |
| 30 | 1.9 | V1.1.7 XXXX | 10d | 2024-08-19 | 2024-08-30 |  |  | waiting |
| 31 | 1.10 | V1.1.8 XXXX | 10d | 2024-09-02 | 2024-09-13 |  |  | waiting |
| 32 | 1.11 | V1.1.9 XXXX | 10d | 2024-09-16 | 2024-09-27 |  |  | waiting |
| 33 | 1.12 | V1.1.10 XXXX | 10d | 2024-09-30 | 2024-10-11 |  |  | waiting |
| 34 | 1.13 | V1.1.11 XXXX | 10d | 2024-10-14 | 2024-10-25 |  |  | waiting |
| 35 | 2 | 二期 | 107d | 2024-11-01 | 2025-03-31 |  |  | waiting |
| 36 | 3 | 三期 | 65d | 2025-04-01 | 2025-06-30 |  |  | waiting |
